# 自动驾驶管理系统

How a schedule from a web Gantt chart changed from version to version. A marks actual dates.

## Version 1 (saved 2026-03-27)

| ID | WBS | Task | Duration | Start | Finish | Complete |
| --- | --- | --- | --- | --- | --- | --- |
| 2 | 1 | **AVP平台** | 51d | 2026-03-19 | 2026-05-08 | 37% |
| 3 | 1.1 | **代客泊车预约系统 （移动端）** | 25d | 2026-04-06 | 2026-04-30 | 30% |
| 4 | 1.1.1 | **首页** | 18d | 2026-04-06 | 2026-04-23 | 29% |
| 5 |  | 登录注册 | 2d | 2026-04-06 | 2026-04-07 | 50% |
| 6 |  | 用户定位展示 | 2d | 2026-04-07 | 2026-04-08 | 50% |
| 7 |  | 车辆定位展示 | 2d | 2026-04-09 | 2026-04-10 | 25% |
| 8 |  | 停车场分布展示 | 2d | 2026-04-13 | 2026-04-14 | 25% |
| 9 |  | 车辆状态展示 | 3d | 2026-04-15 | 2026-04-17 | 25% |
| 10 |  | 一键泊车 | 5d | 2026-04-17 | 2026-04-21 | 25% |
| 11 |  | 一键召车 | 5d | 2026-04-17 | 2026-04-21 | 25% |
| 12 |  | 过程跟踪 | 3d | 2026-04-21 | 2026-04-23 | 25% |
| 13 | 1.1.2 | **个人中心** | 8d | 2026-04-23 | 2026-04-30 | 31% |
| 14 |  | 车辆管理 | 2d | 2026-04-23 | 2026-04-24 | 50% |
| 15 |  | 预警管理 | 2d | 2026-04-25 | 2026-04-26 | 25% |
| 16 |  | 泊车记录 | 2d | 2026-04-27 | 2026-04-28 | 25% |
| 17 |  | 召车记录 | 2d | 2026-04-29 | 2026-04-30 | 25% |
| 18 | 1.2 | **代客泊车管理系统 （web端）** | 33d | 2026-03-19 | 2026-04-20 | 35% |
| 19 | 1.2.1 | **首页概要** | 7d | 2026-03-19 | 2026-03-25 | 31% |
| 20 |  | 停车场统计信息 | 1d | 2026-03-19 | 2026-03-19 | 50% |
| 21 |  | 客户统计信息 | 1d | 2026-03-20 | 2026-03-20 | 25% |
| 22 |  | 车辆统计信息 | 1d | 2026-03-21 | 2026-03-21 | 50% |
| 23 |  | 停车场3D可视化 | 1d | 2026-03-22 | 2026-03-22 | 25% |
| 24 |  | 可预约车位信息 | 1d | 2026-03-23 | 2026-03-23 | 25% |
| 25 |  | 在场AVP车辆信息 | 1d | 2026-03-24 | 2026-03-24 | 50% |
| 26 |  | 在场AVP车辆预警信息 | 1d | 2026-03-25 | 2026-03-25 | 25% |
| 27 |  | 预约管理 | 1d | 2026-03-26 | 2026-03-26 | 50% |
| 28 | 1.2.3 | **场端管理** | 6d | 2026-03-27 | 2026-04-01 | 50% |
| 29 |  | 停车场管理 | 1d | 2026-03-27 | 2026-03-27 | 50% |
| 30 |  | 出入口管理 | 1d | 2026-03-28 | 2026-03-28 | 50% |
| 31 |  | 停车楼层管理 | 1d | 2026-03-29 | 2026-03-29 | 50% |
| 32 |  | 停车区域管理 | 1d | 2026-03-30 | 2026-03-30 | 50% |
| 33 |  | 停车位管理 | 1d | 2026-03-31 | 2026-03-31 | 50% |
| 34 |  | 道闸管理 | 1d | 2026-04-01 | 2026-04-01 | 50% |
| 35 | 1.2.4 | **地图管理** | 3d | 2026-04-02 | 2026-04-04 | 25% |
| 36 |  | 高精地图管理 | 2d | 2026-04-02 | 2026-04-03 | 25% |
| 37 |  | 特征地图管理 | 2d | 2026-04-03 | 2026-04-04 | 25% |
| 38 | 1.2.5 | **客户管理** | 2d | 2026-04-05 | 2026-04-06 | 50% |
| 39 |  | 泊车用户管理 | 1d | 2026-04-05 | 2026-04-05 | 50% |
| 40 |  | 泊车客户管理 | 1d | 2026-04-06 | 2026-04-06 | 50% |
| 41 |  | 车辆管理 | 1d | 2026-04-07 | 2026-04-07 | 50% |
| 42 |  | 预警管理 | 1d | 2026-04-08 | 2026-04-08 | 50% |
| 43 | 1.2.8 | **算法模块** | 5d | 2026-04-09 | 2026-04-13 | 25% |
| 44 |  | 路径规划算法 | 3d | 2026-04-09 | 2026-04-11 | 25% |
| 45 |  | 泊位分配算法 | 3d | 2026-04-11 | 2026-04-13 | 25% |
| 46 | 1.2.9 | **信息发布模块** | 3d | 2026-04-13 | 2026-04-15 | 33% |
| 47 |  | 路径信息发布 | 2d | 2026-04-13 | 2026-04-14 | 25% |
| 48 |  | 泊位信息发布 | 2d | 2026-04-14 | 2026-04-15 | 50% |
| 49 |  | 预警信息发布 | 2d | 2026-04-14 | 2026-04-15 | 25% |
| 50 | 1.2.10 | **地图处理模块** | 5d | 2026-04-16 | 2026-04-20 | 25% |
| 51 |  | 地图解析 | 3d | 2026-04-16 | 2026-04-18 | 25% |
| 52 |  | 地图渲染 | 3d | 2026-04-18 | 2026-04-20 | 25% |
| 53 | 1.3 | **信息服务系统 （web端）** | 31d | 2026-03-27 | 2026-04-26 | 50% |
| 54 | 1.3.1 | **Map地图云服务** | 5d | 2026-04-20 | 2026-04-24 | 50% |
| 55 |  | 地图概览 | 1d | 2026-04-20 | 2026-04-20 | 50% |
| 56 |  | 地图分组 | 1d | 2026-04-21 | 2026-04-21 | 50% |
| 57 |  | 导入地图 | 1d | 2026-04-22 | 2026-04-22 | 50% |
| 58 |  | 导出地图 | 1d | 2026-04-23 | 2026-04-23 | 50% |
| 59 |  | 地图下发 | 1d | 2026-04-24 | 2026-04-24 | 50% |
| 60 | 1.3.2 | **交通事件管理** | 2d | 2026-04-24 | 2026-04-25 | 50% |
| 61 |  | 事件动态管理 | 1d | 2026-04-24 | 2026-04-24 | 50% |
| 62 |  | 事件发布记录 | 1d | 2026-04-25 | 2026-04-25 | 50% |
| 63 |  | 自动转发规则 | 1d | 2026-04-25 | 2026-04-25 | 50% |
| 64 | 1.3.3 | **标志标牌管理** | 31d | 2026-03-27 | 2026-04-26 | 50% |
| 65 |  | 标志标牌资源概览 | 1d | 2026-04-26 | 2026-04-26 | 50% |
| 66 |  | 导入标志标牌资源 | 1d | 2026-03-27 | 2026-03-27 | 50% |
| 67 |  | 标志标牌任务下发 | 1d | 2026-03-28 | 2026-03-28 | 50% |
| 68 | 1.4 | **应用管理系统 （web端）** | 11d | 2026-04-28 | 2026-05-08 | 50% |
| 69 | 1.4.1 | **统一账户管理** | 3d | 2026-04-28 | 2026-04-30 | 50% |
| 70 |  | 组织管理 | 1d | 2026-04-28 | 2026-04-28 | 50% |
| 71 |  | 用户管理 | 1d | 2026-04-29 | 2026-04-29 | 50% |

| ID | WBS | Task | Duration | Start | Finish | Complete |
| --- | --- | --- | --- | --- | --- | --- |
| 72 |  | 角色管理 | 1d | 2026-04-30 | 2026-04-30 | 50% |
| 73 | 1.4.2 | **设备接入管理** | 8d | 2026-05-01 | 2026-05-08 | 50% |
| 74 |  | 设备类型管理 | 2d | 2026-05-01 | 2026-05-02 | 50% |
| 75 |  | 产品管理 | 3d | 2026-05-03 | 2026-05-05 | 50% |
| 76 |  | 设备管理 | 3d | 2026-05-05 | 2026-05-07 | 50% |
| 77 |  | 协议管理 | 1d | 2026-05-08 | 2026-05-08 | 50% |
| 78 | 2 | **路侧融合感知系统** | 48d | 2026-03-19 | 2026-05-05 |  |
| 79 |  | 感知子系统 | 13d | 2026-03-19 | 2026-03-31 |  |
| 80 |  | 边缘计算子系统 | 18d | 2026-03-31 | 2026-04-17 |  |
| 81 |  | 传输子系统 | 19d | 2026-04-17 | 2026-05-05 |  |
| 82 | 3 | **高精地图** | 17d | 2026-04-01 | 2026-04-17 |  |
| 83 |  | 采集范围 | 2d | 2026-04-01 | 2026-04-02 |  |
| 84 |  | 地图要素 | 3d | 2026-04-03 | 2026-04-05 |  |
| 85 |  | 数据结构 | 6d | 2026-04-06 | 2026-04-11 |  |
| 86 |  | 数据格式 | 4d | 2026-04-11 | 2026-04-14 |  |
| 87 |  | 数据精度 | 3d | 2026-04-15 | 2026-04-17 |  |
| 88 | 4 | **车辆对接** | 12d | 2026-04-06 | 2026-04-17 |  |
| 89 |  | 标准接口 | 5d | 2026-04-06 | 2026-04-10 |  |
| 90 |  | 对接萝卜快跑 | 8d | 2026-04-10 | 2026-04-17 |  |
| 91 | 5 | **测试阶段** | 58d | 2026-03-19 | 2026-05-15 |  |
| 92 |  | 单元测试 | 51d | 2026-03-19 | 2026-05-08 |  |
| 93 |  | 集成测试 | 11d | 2026-05-05 | 2026-05-15 |  |
| 94 |  | 系统测试 | 11d | 2026-05-05 | 2026-05-15 |  |
| 95 |  | Bug修复 | 11d | 2026-05-05 | 2026-05-15 |  |
| 96 | 6 | **部署上线** | 7d | 2026-05-10 | 2026-05-16 |  |
| 97 |  | 生产环境部署 | 7d | 2026-05-10 | 2026-05-16 |  |
| 98 |  | 上线验证 | 7d | 2026-05-10 | 2026-05-16 |  |
| 99 |  | 项目交付 | 7d | 2026-05-10 | 2026-05-16 |  |

## Version 2 (saved 2026-03-30)

Last finish stays 2026-05-16. Complete tasks 0 → 33.

Changed:

| ID | Task | Complete |
| --- | --- | --- |
| 2 | **AVP平台** | 37% → 59% |
| 3 | **代客泊车预约系统 （移动端）** | 30% → 39% |
| 4 | **首页** | 29% → 38% |
| 5 | 登录注册 | 50% → 100% |
| 6 | 用户定位展示 | 50% → 100% |
| 13 | **个人中心** | 31% → 44% |
| 14 | 车辆管理 | 50% → 100% |
| 18 | **代客泊车管理系统 （web端）** | 35% → 51% |
| 27 | 预约管理 | 50% → 100% |
| 28 | **场端管理** | 50% → 100% |
| 29 | 停车场管理 | 50% → 100% |
| 30 | 出入口管理 | 50% → 100% |
| 31 | 停车楼层管理 | 50% → 100% |
| 32 | 停车区域管理 | 50% → 100% |
| 33 | 停车位管理 | 50% → 100% |
| 34 | 道闸管理 | 50% → 100% |
| 38 | **客户管理** | 50% → 100% |
| 39 | 泊车用户管理 | 50% → 100% |
| 40 | 泊车客户管理 | 50% → 100% |
| 41 | 车辆管理 | 50% → 100% |
| 42 | 预警管理 | 50% → 100% |
| 46 | **信息发布模块** | 33% → 50% |
| 48 | 泊位信息发布 | 50% → 100% |
| 53 | **信息服务系统 （web端）** | 50% → 100% |
| 54 | **Map地图云服务** | 50% → 100% |
| 55 | 地图概览 | 50% → 100% |
| 56 | 地图分组 | 50% → 100% |
| 57 | 导入地图 | 50% → 100% |
| 58 | 导出地图 | 50% → 100% |
| 59 | 地图下发 | 50% → 100% |
| 60 | **交通事件管理** | 50% → 100% |
| 61 | 事件动态管理 | 50% → 100% |
| 62 | 事件发布记录 | 50% → 100% |
| 63 | 自动转发规则 | 50% → 100% |
| 64 | **标志标牌管理** | 50% → 100% |
| 65 | 标志标牌资源概览 | 50% → 100% |
| 66 | 导入标志标牌资源 | 50% → 100% |
| 67 | 标志标牌任务下发 | 50% → 100% |
| 68 | **应用管理系统 （web端）** | 50% → 100% |
| 69 | **统一账户管理** | 50% → 100% |
| 70 | 组织管理 | 50% → 100% |
| 71 | 用户管理 | 50% → 100% |
| 72 | 角色管理 | 50% → 100% |
| 73 | **设备接入管理** | 50% → 100% |
| 74 | 设备类型管理 | 50% → 100% |
| 75 | 产品管理 | 50% → 100% |
| 76 | 设备管理 | 50% → 100% |
| 77 | 协议管理 | 50% → 100% |

## Version 3 (saved 2026-06-17)

Last finish stays 2026-05-16. Complete tasks 33 → 42.

Changed:

| ID | Task | Complete |
| --- | --- | --- |
| 2 | **AVP平台** | 59% → 79% |
| 3 | **代客泊车预约系统 （移动端）** | 39% → 100% |
| 4 | **首页** | 38% → 100% |
| 7 | 车辆定位展示 | 25% → 100% |
| 8 | 停车场分布展示 | 25% → 100% |
| 9 | 车辆状态展示 | 25% → 100% |
| 10 | 一键泊车 | 25% → 100% |
| 11 | 一键召车 | 25% → 100% |
| 12 | 过程跟踪 | 25% → 100% |
| 13 | **个人中心** | 44% → 100% |
| 15 | 预警管理 | 25% → 100% |
| 16 | 泊车记录 | 25% → 100% |
| 17 | 召车记录 | 25% → 100% |

## Version 4 (saved 2026-06-18)

Last finish stays 2026-05-16. Complete tasks 42 → 60.

Changed:

| ID | Task | Complete |
| --- | --- | --- |
| 2 | **AVP平台** | 79% → 100% |
| 18 | **代客泊车管理系统 （web端）** | 51% → 100% |
| 19 | **首页概要** | 31% → 100% |
| 20 | 停车场统计信息 | 50% → 100% |
| 21 | 客户统计信息 | 25% → 100% |
| 22 | 车辆统计信息 | 50% → 100% |
| 23 | 停车场3D可视化 | 25% → 100% |
| 24 | 可预约车位信息 | 25% → 100% |
| 25 | 在场AVP车辆信息 | 50% → 100% |
| 26 | 在场AVP车辆预警信息 | 25% → 100% |
| 35 | **地图管理** | 25% → 100% |
| 36 | 高精地图管理 | 25% → 100% |
| 37 | 特征地图管理 | 25% → 100% |
| 43 | **算法模块** | 25% → 100% |
| 44 | 路径规划算法 | 25% → 100% |
| 45 | 泊位分配算法 | 25% → 100% |
| 46 | **信息发布模块** | 50% → 100% |
| 47 | 路径信息发布 | 25% → 100% |
| 49 | 预警信息发布 | 25% → 100% |
| 50 | **地图处理模块** | 25% → 100% |
| 51 | 地图解析 | 25% → 100% |
| 52 | 地图渲染 | 25% → 100% |
| 78 | **路侧融合感知系统** | 0% → 100% |
| 79 | 感知子系统 | 0% → 100% |
| 80 | 边缘计算子系统 | 0% → 100% |
| 81 | 传输子系统 | 0% → 100% |
