# 自动驾驶管理系统

How a schedule from a web Gantt chart changed from version to version. A marks actual dates.

## Version 1 (saved 2026-03-24)

| ID | WBS | Task | Duration | Start | Finish |
| --- | --- | --- | --- | --- | --- |
| 2 | 1 | **AVP平台** | 1d | 2026-03-25 | 2026-03-25 |
| 3 | 1.1 | **代客泊车预约系统 （移动端）** | 1d | 2026-03-25 | 2026-03-25 |
| 4 |  | 代客泊车管理系统 （web端） | 1d | 2026-03-25 | 2026-03-25 |
| 5 |  | 信息服务系统 （web端） | 1d | 2026-03-25 | 2026-03-25 |
| 6 |  | 应用管理系统 （web端） | 1d | 2026-03-25 | 2026-03-25 |

## Version 2 (saved 2026-03-24)

Last finish stays 2026-03-25.

Added:

| ID | Task | Duration | Start | Finish |
| --- | --- | --- | --- | --- |
| 4 | **首页** | 1d | 2026-03-25 | 2026-03-25 |
| 5 | 登录注册 | 1d | 2026-03-25 | 2026-03-25 |
| 6 | 用户定位展示 | 1d | 2026-03-25 | 2026-03-25 |
| 7 | 车辆定位展示 | 1d | 2026-03-25 | 2026-03-25 |
| 8 | 停车场分布展示 | 1d | 2026-03-25 | 2026-03-25 |
| 9 | 车辆状态展示 | 1d | 2026-03-25 | 2026-03-25 |
| 10 | 一键泊车 | 1d | 2026-03-25 | 2026-03-25 |
| 11 | 一键召车 | 1d | 2026-03-25 | 2026-03-25 |
| 12 | 过程跟踪 | 1d | 2026-03-25 | 2026-03-25 |
| 13 | **个人中心** | 1d | 2026-03-25 | 2026-03-25 |
| 14 | 车辆管理 | 1d | 2026-03-25 | 2026-03-25 |
| 15 | 预警管理 | 1d | 2026-03-25 | 2026-03-25 |
| 16 | 泊车记录 | 1d | 2026-03-25 | 2026-03-25 |
| 17 | 召车记录 | 1d | 2026-03-25 | 2026-03-25 |
| 18 | **代客泊车管理系统 （web端）** | 1d | 2026-03-25 | 2026-03-25 |
| 19 | **首页概要** | 1d | 2026-03-25 | 2026-03-25 |
| 20 | 停车场统计信息 | 1d | 2026-03-25 | 2026-03-25 |
| 21 | 客户统计信息 | 1d | 2026-03-25 | 2026-03-25 |
| 22 | 车辆统计信息 | 1d | 2026-03-25 | 2026-03-25 |
| 23 | 停车场3D可视化 | 1d | 2026-03-25 | 2026-03-25 |
| 24 | 可预约车位信息 | 1d | 2026-03-25 | 2026-03-25 |
| 25 | 在场AVP车辆信息 | 1d | 2026-03-25 | 2026-03-25 |
| 26 | 在场AVP车辆预警信息 | 1d | 2026-03-25 | 2026-03-25 |
| 27 | 预约管理 | 1d | 2026-03-25 | 2026-03-25 |
| 28 | **场端管理** | 1d | 2026-03-25 | 2026-03-25 |
| 29 | 停车场管理 | 1d | 2026-03-25 | 2026-03-25 |
| 30 | 出入口管理 | 1d | 2026-03-25 | 2026-03-25 |
| 31 | 停车楼层管理 | 1d | 2026-03-25 | 2026-03-25 |
| 32 | 停车区域管理 | 1d | 2026-03-25 | 2026-03-25 |
| 33 | 03 | 1d | 2026-03-25 | 2026-03-25 |
| 34 | 01 | 1d | 2026-03-25 | 2026-03-25 |
| 35 | 05 | 1d | 2026-03-25 | 2026-03-25 |

Removed: 4 代客泊车管理系统 （web端）

## Version 3 (saved 2026-03-25)

Last finish 2026-03-25 → 2026-05-16 (+52d).

Added:

| ID | Task | Duration | Start | Finish |
| --- | --- | --- | --- | --- |
| 33 | 停车位管理 | 1d | 2026-03-31 | 2026-03-31 |
| 34 | 道闸管理 | 1d | 2026-04-01 | 2026-04-01 |
| 35 | **地图管理** | 3d | 2026-04-02 | 2026-04-04 |
| 36 | 高精地图管理 | 2d | 2026-04-02 | 2026-04-03 |
| 37 | 特征地图管理 | 2d | 2026-04-03 | 2026-04-04 |
| 38 | **客户管理** | 2d | 2026-04-05 | 2026-04-06 |
| 39 | 泊车用户管理 | 1d | 2026-04-05 | 2026-04-05 |
| 40 | 泊车客户管理 | 1d | 2026-04-06 | 2026-04-06 |
| 41 | 车辆管理 | 1d | 2026-04-07 | 2026-04-07 |
| 42 | 预警管理 | 1d | 2026-04-08 | 2026-04-08 |
| 43 | **算法模块** | 5d | 2026-04-09 | 2026-04-13 |
| 44 | 路径规划算法 | 3d | 2026-04-09 | 2026-04-11 |
| 45 | 泊位分配算法 | 3d | 2026-04-11 | 2026-04-13 |
| 46 | **信息发布模块** | 3d | 2026-04-13 | 2026-04-15 |
| 47 | 路径信息发布 | 2d | 2026-04-13 | 2026-04-14 |
| 48 | 泊位信息发布 | 2d | 2026-04-14 | 2026-04-15 |
| 49 | 预警信息发布 | 2d | 2026-04-14 | 2026-04-15 |
| 50 | **地图处理模块** | 5d | 2026-04-16 | 2026-04-20 |
| 51 | 地图解析 | 3d | 2026-04-16 | 2026-04-18 |
| 52 | 地图渲染 | 3d | 2026-04-18 | 2026-04-20 |
| 54 | **Map地图云服务** | 5d | 2026-04-20 | 2026-04-24 |
| 55 | 地图概览 | 1d | 2026-04-20 | 2026-04-20 |
| 56 | 地图分组 | 1d | 2026-04-21 | 2026-04-21 |
| 57 | 导入地图 | 1d | 2026-04-22 | 2026-04-22 |
| 58 | 导出地图 | 1d | 2026-04-23 | 2026-04-23 |
| 59 | 地图下发 | 1d | 2026-04-24 | 2026-04-24 |
| 60 | **交通事件管理** | 2d | 2026-04-24 | 2026-04-25 |
| 61 | 事件动态管理 | 1d | 2026-04-24 | 2026-04-24 |
| 62 | 事件发布记录 | 1d | 2026-04-25 | 2026-04-25 |
| 63 | 自动转发规则 | 1d | 2026-04-25 | 2026-04-25 |
| 64 | **标志标牌管理** | 31d | 2026-03-27 | 2026-04-26 |
| 65 | 标志标牌资源概览 | 1d | 2026-04-26 | 2026-04-26 |
| 66 | 导入标志标牌资源 | 1d | 2026-03-27 | 2026-03-27 |
| 67 | 标志标牌任务下发 | 1d | 2026-03-28 | 2026-03-28 |
| 69 | **统一账户管理** | 3d | 2026-04-28 | 2026-04-30 |
| 70 | 组织管理 | 1d | 2026-04-28 | 2026-04-28 |
| 71 | 用户管理 | 1d | 2026-04-29 | 2026-04-29 |
| 72 | 角色管理 | 1d | 2026-04-30 | 2026-04-30 |
| 73 | **设备接入管理** | 8d | 2026-05-01 | 2026-05-08 |
| 74 | 设备类型管理 | 2d | 2026-05-01 | 2026-05-02 |
| 75 | 产品管理 | 3d | 2026-05-03 | 2026-05-05 |
| 76 | 设备管理 | 3d | 2026-05-05 | 2026-05-07 |
| 77 | 协议管理 | 1d | 2026-05-08 | 2026-05-08 |
| 78 | **路侧融合感知系统** | 48d | 2026-03-19 | 2026-05-05 |
| 79 | 感知子系统 | 13d | 2026-03-19 | 2026-03-31 |
| 80 | 边缘计算子系统 | 18d | 2026-03-31 | 2026-04-17 |
| 81 | 传输子系统 | 19d | 2026-04-17 | 2026-05-05 |
| 82 | **高精地图** | 17d | 2026-04-01 | 2026-04-17 |
| 83 | 采集范围 | 2d | 2026-04-01 | 2026-04-02 |
| 84 | 地图要素 | 3d | 2026-04-03 | 2026-04-05 |
| 85 | 数据结构 | 6d | 2026-04-06 | 2026-04-11 |
| 86 | 数据格式 | 4d | 2026-04-11 | 2026-04-14 |
| 87 | 数据精度 | 3d | 2026-04-15 | 2026-04-17 |
| 88 | **车辆对接** | 12d | 2026-04-06 | 2026-04-17 |
| 89 | 标准接口 | 5d | 2026-04-06 | 2026-04-10 |
| 90 | 对接萝卜快跑 | 8d | 2026-04-10 | 2026-04-17 |
| 91 | **测试阶段** | 58d | 2026-03-19 | 2026-05-15 |
| 92 | 单元测试 | 51d | 2026-03-19 | 2026-05-08 |
| 93 | 集成测试 | 11d | 2026-05-05 | 2026-05-15 |
| 94 | 系统测试 | 11d | 2026-05-05 | 2026-05-15 |
| 95 | Bug修复 | 11d | 2026-05-05 | 2026-05-15 |
| 96 | **部署上线** | 7d | 2026-05-10 | 2026-05-16 |
| 97 | 生产环境部署 | 7d | 2026-05-10 | 2026-05-16 |
| 98 | 上线验证 | 7d | 2026-05-10 | 2026-05-16 |
| 99 | 项目交付 | 7d | 2026-05-10 | 2026-05-16 |

Removed: 33 03; 34 01; 35 05

Changed:

| ID | Task | Start | Finish | Duration | Complete |
| --- | --- | --- | --- | --- | --- |
| 2 | **AVP平台** | 2026-03-25 → 2026-03-19 (-6d) | 2026-03-25 → 2026-05-08 (+44d) | 1d → 51d | 0% → 37% |
| 3 | **代客泊车预约系统 （移动端）** | 2026-03-25 → 2026-04-06 (+12d) | 2026-03-25 → 2026-04-30 (+36d) | 1d → 25d | 0% → 30% |
| 4 | **首页** | 2026-03-25 → 2026-04-06 (+12d) | 2026-03-25 → 2026-04-23 (+29d) | 1d → 18d | 0% → 29% |
| 5 | 登录注册 | 2026-03-25 → 2026-04-06 (+12d) | 2026-03-25 → 2026-04-07 (+13d) | 1d → 2d | 0% → 50% |
| 6 | 用户定位展示 | 2026-03-25 → 2026-04-07 (+13d) | 2026-03-25 → 2026-04-08 (+14d) | 1d → 2d | 0% → 50% |
| 7 | 车辆定位展示 | 2026-03-25 → 2026-04-09 (+15d) | 2026-03-25 → 2026-04-10 (+16d) | 1d → 2d | 0% → 25% |
| 8 | 停车场分布展示 | 2026-03-25 → 2026-04-13 (+19d) | 2026-03-25 → 2026-04-14 (+20d) | 1d → 2d | 0% → 25% |
| 9 | 车辆状态展示 | 2026-03-25 → 2026-04-15 (+21d) | 2026-03-25 → 2026-04-17 (+23d) | 1d → 3d | 0% → 25% |
| 10 | 一键泊车 | 2026-03-25 → 2026-04-17 (+23d) | 2026-03-25 → 2026-04-21 (+27d) | 1d → 5d | 0% → 25% |
| 11 | 一键召车 | 2026-03-25 → 2026-04-17 (+23d) | 2026-03-25 → 2026-04-21 (+27d) | 1d → 5d | 0% → 25% |
| 12 | 过程跟踪 | 2026-03-25 → 2026-04-21 (+27d) | 2026-03-25 → 2026-04-23 (+29d) | 1d → 3d | 0% → 25% |
| 13 | **个人中心** | 2026-03-25 → 2026-04-23 (+29d) | 2026-03-25 → 2026-04-30 (+36d) | 1d → 8d | 0% → 31% |
| 14 | 车辆管理 | 2026-03-25 → 2026-04-23 (+29d) | 2026-03-25 → 2026-04-24 (+30d) | 1d → 2d | 0% → 50% |
| 15 | 预警管理 | 2026-03-25 → 2026-04-25 (+31d) | 2026-03-25 → 2026-04-26 (+32d) | 1d → 2d | 0% → 25% |
| 16 | 泊车记录 | 2026-03-25 → 2026-04-27 (+33d) | 2026-03-25 → 2026-04-28 (+34d) | 1d → 2d | 0% → 25% |
| 17 | 召车记录 | 2026-03-25 → 2026-04-29 (+35d) | 2026-03-25 → 2026-04-30 (+36d) | 1d → 2d | 0% → 25% |
| 18 | **代客泊车管理系统 （web端）** | 2026-03-25 → 2026-03-19 (-6d) | 2026-03-25 → 2026-04-20 (+26d) | 1d → 33d | 0% → 35% |
| 19 | **首页概要** | 2026-03-25 → 2026-03-19 (-6d) |  | 1d → 7d | 0% → 31% |
| 20 | 停车场统计信息 | 2026-03-25 → 2026-03-19 (-6d) | 2026-03-25 → 2026-03-19 (-6d) |  | 0% → 50% |
| 21 | 客户统计信息 | 2026-03-25 → 2026-03-20 (-5d) | 2026-03-25 → 2026-03-20 (-5d) |  | 0% → 25% |
| 22 | 车辆统计信息 | 2026-03-25 → 2026-03-21 (-4d) | 2026-03-25 → 2026-03-21 (-4d) |  | 0% → 50% |
| 23 | 停车场3D可视化 | 2026-03-25 → 2026-03-22 (-3d) | 2026-03-25 → 2026-03-22 (-3d) |  | 0% → 25% |
| 24 | 可预约车位信息 | 2026-03-25 → 2026-03-23 (-2d) | 2026-03-25 → 2026-03-23 (-2d) |  | 0% → 25% |
| 25 | 在场AVP车辆信息 | 2026-03-25 → 2026-03-24 (-1d) | 2026-03-25 → 2026-03-24 (-1d) |  | 0% → 50% |
| 26 | 在场AVP车辆预警信息 |  |  |  | 0% → 25% |
| 27 | 预约管理 | 2026-03-25 → 2026-03-26 (+1d) | 2026-03-25 → 2026-03-26 (+1d) |  | 0% → 50% |
| 28 | **场端管理** | 2026-03-25 → 2026-03-27 (+2d) | 2026-03-25 → 2026-04-01 (+7d) | 1d → 6d | 0% → 50% |
| 29 | 停车场管理 | 2026-03-25 → 2026-03-27 (+2d) | 2026-03-25 → 2026-03-27 (+2d) |  | 0% → 50% |
| 30 | 出入口管理 | 2026-03-25 → 2026-03-28 (+3d) | 2026-03-25 → 2026-03-28 (+3d) |  | 0% → 50% |
| 31 | 停车楼层管理 | 2026-03-25 → 2026-03-29 (+4d) | 2026-03-25 → 2026-03-29 (+4d) |  | 0% → 50% |
| 32 | 停车区域管理 | 2026-03-25 → 2026-03-30 (+5d) | 2026-03-25 → 2026-03-30 (+5d) |  | 0% → 50% |
| 53 | **信息服务系统 （web端）** | 2026-03-25 → 2026-03-27 (+2d) | 2026-03-25 → 2026-04-26 (+32d) | 1d → 31d | 0% → 50% |
| 68 | **应用管理系统 （web端）** | 2026-03-25 → 2026-04-28 (+34d) | 2026-03-25 → 2026-05-08 (+44d) | 1d → 11d | 0% → 50% |
